# Step7_l4

How a schedule from MS Project changed from version to version. A marks actual dates.

## Version 1 (data date 2026-05-10, saved 2026-04-29, file Step7_l4.mpp)

Note of the change: labs

| ID | WBS | Task | Duration | Start | Finish | Predecessors | Complete | Total float | Constraint |
| --- | --- | --- | --- | --- | --- | --- | --- | --- | --- |
| 1 |  | Начало проекта | 0d | 2026-03-02 09:00 A | 2026-03-02 09:00 A |  | 100% |  |  |
| 2 | 2 | **Создание интерфейса** | 85.92d | 2026-03-02 09:00 A | 2026-07-06 11:21 | 1 | 85% | 0d |  |
| 3 | 2.1 | **Разработка дизайна интерфейса** | 29d | 2026-03-02 09:00 A | 2026-04-10 18:00 A |  | 100% |  |  |
| 4 |  | Разработка 2D графических элементов | 3.3w | 2026-03-02 09:00 A | 2026-03-25 18:00 A |  | 100% |  |  |
| 5 |  | Разработка 3D графических элементов | 2.2w | 2026-03-02 09:00 A | 2026-03-18 12:00 A | 4SS | 100% |  |  |
| 6 |  | Создание заставки | 3.3w | 2026-03-18 12:00 A | 2026-04-10 18:00 A | 5 | 100% |  |  |
| 7 |  | Программирование интерфейса | 1.5w | 2026-06-24 16:21 | 2026-07-06 11:21 | 3, 12 |  | 0d |  |
| 8 | 3 | **Построение базы объектов** | 86.18d | 2026-03-24 17:04 A | 2026-07-28 12:29 |  | 60% | 10.87d |  |
| 9 |  | Анализ и построение структуры базы объектов | 2w | 2026-03-24 17:04 A | 2026-04-13 15:13 A |  | 100% |  |  |
| 10 |  | Программирование средств обработки базы объектов | 3.12w | 2026-04-14 16:02 A | 2026-07-06 15:10 | 9 | 96% | 10.87d |  |
| 11 |  | Наполнение базы объектов | 3.16w | 2026-07-06 15:10 | 2026-07-28 12:29 | 10 |  | 10.87d |  |
| 12 | 4 | **Создание ядра GIS** | 78.42d | 2026-03-02 09:00 A | 2026-06-24 16:21 |  | 60% | 0d |  |
| 13 |  | Анализ и проектирование ядра | 3.98w | 2026-03-02 09:00 A | 2026-03-30 18:00 A |  | 100% |  |  |
| 14 |  | Создание модели ядра | 3.53w | 2026-03-31 09:00 A | 2026-04-28 09:47 A | 13 | 100% |  |  |
| 15 |  | Тестирование модели ядра | 0.25w | 2026-04-14 12:49 A | 2026-04-28 12:47 A | 14 | 100% |  |  |
| 16 |  | Создание рабочей версии ядра | 7.51w | 2026-04-28 12:47 A | 2026-06-24 16:21 | 15 | 18% | 0d |  |
| 17 |  | Создание мультимедиа – наполнения | 6w | 2026-04-13 09:00 A | 2026-05-29 17:00 | 3 | 58% | 51.31d |  |
| 18 |  | Создание справочной системы | 2w | 2026-07-16 11:21 | 2026-07-30 17:21 | 7 |  | 8.39d |  |
| 19 | 7 | **Создание руководства пользователя** | 18d | 2026-06-22 11:21 | 2026-07-16 11:21 | 7FS-10d |  | 0d |  |
| 20 |  | Разработка дизайна руководства | 1w | 2026-06-22 11:21 | 2026-06-29 14:21 |  |  | 0d |  |
| 21 |  | Написание руководства пользователя | 3w | 2026-06-24 11:21 | 2026-07-16 11:21 | 20SS+2d |  | 0d |  |
| 22 | 8 | **Создание web-сайта и поддержка** | 24.88d | 2026-06-24 11:21 | 2026-07-29 10:21 |  |  | 0d |  |
| 23 |  | Разработка структуры сайта | 1d | 2026-06-24 11:21 | 2026-06-25 11:21 | 21SS |  | 0d |  |
| 24 |  | Разработка дизайна сайта | 1.48w | 2026-06-25 11:21 | 2026-07-06 17:21 | 23 |  | 0d |  |
| 25 |  | Наполнение сайта | 3w | 2026-07-06 17:21 | 2026-07-29 10:21 | 24 |  | 0d |  |
| 26 |  | Тестирование сайта | 3.03w | 2026-07-22 10:21 | 2026-08-12 11:28 | 22FS-1w |  | 0d |  |
| 27 |  | Сдача сайта в эксплуатацию | 0d | 2026-08-12 11:28 | 2026-08-12 11:28 | 26 |  | 0d |  |
| 28 | 11 | **Совещание** | 95.75d | 2026-03-04 10:00 A | 2026-07-22 11:00 |  | 48% | 15.06d |  |
| 29 |  | Совещание 1 | 1h | 2026-03-04 10:00 A | 2026-03-04 11:00 A |  | 100% |  | start no earlier than 2026-03-04 10:00 |
| 30 |  | Совещание 2 | 1h | 2026-03-11 10:00 A | 2026-03-11 11:00 A |  | 100% |  | start no earlier than 2026-03-11 10:00 |
| 31 |  | Совещание 3 | 1h | 2026-03-18 10:00 A | 2026-03-18 11:00 A |  | 100% |  | start no earlier than 2026-03-18 10:00 |
| 32 |  | Совещание 4 | 1h | 2026-03-25 10:00 A | 2026-03-25 11:00 A |  | 100% |  | start no earlier than 2026-03-25 10:00 |
| 33 |  | Совещание 5 | 1h | 2026-04-01 10:00 A | 2026-04-01 11:00 A |  | 100% |  | start no earlier than 2026-04-01 10:00 |
| 34 |  | Совещание 6 | 1h | 2026-04-08 10:00 A | 2026-04-08 11:00 A |  | 100% |  | start no earlier than 2026-04-08 10:00 |
| 35 |  | Совещание 7 | 1h | 2026-04-15 10:00 A | 2026-04-15 11:00 A |  | 100% |  | start no earlier than 2026-04-15 10:00 |
| 36 |  | Совещание 8 | 1h | 2026-04-22 10:00 A | 2026-04-22 11:00 A |  | 100% |  | start no earlier than 2026-04-22 10:00 |
| 37 |  | Совещание 9 | 1h | 2026-04-29 10:00 A | 2026-04-29 11:00 A |  | 100% |  | start no earlier than 2026-04-29 10:00 |
| 38 |  | Совещание 10 | 1h | 2026-05-06 10:00 A | 2026-05-06 11:00 A |  | 100% |  | start no earlier than 2026-05-06 10:00 |
| 39 |  | Совещание 11 | 1h | 2026-05-13 10:00 | 2026-05-13 11:00 |  |  | 63.93d | start no earlier than 2026-05-13 10:00 |
| 40 |  | Совещание 12 | 1h | 2026-05-20 10:00 | 2026-05-20 11:00 |  |  | 58.93d | start no earlier than 2026-05-20 10:00 |
| 41 |  | Совещание 13 | 1h | 2026-05-27 10:00 | 2026-05-27 11:00 |  |  | 53.93d | start no earlier than 2026-05-27 10:00 |
| 42 |  | Совещание 14 | 1h | 2026-06-03 10:00 | 2026-06-03 11:00 |  |  | 48.93d | start no earlier than 2026-06-03 10:00 |
| 43 |  | Совещание 15 | 1h | 2026-06-10 10:00 | 2026-06-10 11:00 |  |  | 43.93d | start no earlier than 2026-06-10 10:00 |
| 44 |  | Совещание 16 | 1h | 2026-06-17 10:00 | 2026-06-17 11:00 |  |  | 40.06d | start no earlier than 2026-06-17 10:00 |
| 45 |  | Совещание 17 | 1h | 2026-06-24 10:00 | 2026-06-24 11:00 |  |  | 35.06d | start no earlier than 2026-06-24 10:00 |
| 46 |  | Совещание 18 | 1h | 2026-07-01 10:00 | 2026-07-01 11:00 |  |  | 30.06d | start no earlier than 2026-07-01 10:00 |
| 47 |  | Совещание 19 | 1h | 2026-07-08 10:00 | 2026-07-08 11:00 |  |  | 25.06d | start no earlier than 2026-07-08 10:00 |
| 48 |  | Совещание 20 | 1h | 2026-07-15 10:00 | 2026-07-15 11:00 |  |  | 20.06d | start no earlier than 2026-07-15 10:00 |
| 49 |  | Совещание 21 | 1h | 2026-07-22 10:00 | 2026-07-22 11:00 |  |  | 15.06d | start no earlier than 2026-07-22 10:00 |

## Version 2 (saved 2026-04-29, file Step3.mpp)

Note of the change: labs

Last finish 2026-08-12 → 2026-08-10 (-2d). Complete tasks 18 → 0.

Added:

| ID | Task | Duration | Start | Finish |
| --- | --- | --- | --- | --- |
| 2 | **Анализ архитектуры** | 25d | 2026-03-02 | 2026-04-06 |
| 5 | **Проектирование** | 31d | 2026-03-02 | 2026-04-14 |
| 15 | **Кодирование** | 111d | 2026-03-02 | 2026-08-10 |
| 24 | **Тестирование** | 50d | 2026-03-18 | 2026-05-29 |

Removed: 2 Создание интерфейса; 3 Разработка дизайна интерфейса; 8 Построение базы объектов; 19 Создание руководства пользователя; 28 Совещание; 29 Совещание 1; 30 Совещание 2; 31 Совещание 3; 32 Совещание 4; 33 Совещание 5; 34 Совещание 6; 35 Совещание 7; 36 Совещание 8; 37 Совещание 9; 38 Совещание 10; 39 Совещание 11; 40 Совещание 12; 41 Совещание 13; 42 Совещание 14; 43 Совещание 15; 44 Совещание 16; 45 Совещание 17; 46 Совещание 18; 47 Совещание 19; 48 Совещание 20; 49 Совещание 21

Changed:

| ID | Task | Start | Finish | Duration | Complete | Total float | Predecessors | Other |
| --- | --- | --- | --- | --- | --- | --- | --- | --- |
| 1 | Начало проекта | 2026-03-02 09:00 A → 2026-03-02 | 2026-03-02 09:00 A → 2026-03-02 |  | 100% → 0% | none → 111d |  | baseline start 2026-03-02 09:00 → none; baseline finish 2026-03-02 09:00 → none |
| 3 | Анализ и построение структуры базы объектов | 2026-03-24 17:04 A → 2026-03-24 | 2026-04-13 15:13 A → 2026-04-06 (-7d) |  | 100% → 0% | none → 11d |  | baseline start 2026-03-24 12:00 → none; baseline finish 2026-04-07 15:00 → none |
| 4 | Анализ и проектирование ядра | 2026-03-02 09:00 A → 2026-03-02 | 2026-03-30 18:00 A → 2026-03-23 (-7d) | 3.98w → 3w | 100% → 0% | none → 0d |  | baseline start 2026-03-02 09:00 → none; baseline finish 2026-03-24 12:00 → none |
| 6 | Разработка 2D графических элементов | 2026-03-02 09:00 A → 2026-03-02 | 2026-03-25 18:00 A → 2026-04-06 (+12d) | 3.3w → 3w | 100% → 0% | none → 81d |  | baseline start 2026-03-02 09:00 → none; baseline finish 2026-03-24 12:00 → none |
| 7 | Разработка 3D графических элементов | 2026-03-02 09:00 A → 2026-03-02 | 2026-03-18 12:00 A → 2026-03-23 (+5d) | 2.2w → 2w | 100% → 0% | none → 81d |  | baseline start 2026-03-02 09:00 → none; baseline finish 2026-03-17 11:00 → none |
| 8 | Создание заставки | 2026-03-18 12:00 A → 2026-03-24 (+6d) | 2026-04-10 18:00 A → 2026-04-13 (+3d) | 3.3w → 3w | 100% → 0% | none → 81d |  | baseline start 2026-03-17 11:00 → none; baseline finish 2026-04-07 15:00 → none |
| 9 | Разработка дизайна руководства | 2026-06-22 11:21 → 2026-03-11 (-103d) | 2026-06-29 14:21 → 2026-03-17 (-104d) |  |  | 0d → 80d | none → 13 | baseline start 2026-06-01 12:23 → none; baseline finish 2026-06-08 14:23 → none |
| 10 | Написание руководства пользователя | 2026-06-24 11:21 → 2026-03-25 (-91d) | 2026-07-16 11:21 → 2026-04-14 (-93d) |  |  | 0d → 80d |  | baseline start 2026-06-03 12:23 → none; baseline finish 2026-06-25 17:23 → none |
| 11 | **Создание web-сайта и поддержка** | 2026-06-24 11:21 → 2026-03-02 (-114d) | 2026-07-29 10:21 → 2026-03-24 (-127d) | 24.88d → 16d |  | 0d → 50d |  | baseline start 2026-06-03 12:23 → none; baseline finish 2026-07-08 10:23 → none |
| 12 | Разработка структуры сайта | 2026-06-24 11:21 → 2026-03-02 (-114d) | 2026-06-25 11:21 → 2026-03-02 (-115d) |  |  | 0d → 50d | 10SS → none | baseline start 2026-06-03 12:23 → none; baseline finish 2026-06-04 12:23 → none |
| 13 | Разработка дизайна сайта | 2026-06-25 11:21 → 2026-03-03 (-114d) | 2026-07-06 17:21 → 2026-03-10 (-118d) | 1.48w → 1w |  | 0d → 50d |  | baseline start 2026-06-04 12:23 → none; baseline finish 2026-06-16 16:23 → none |
| 14 | Создание справочной системы | 2026-07-16 11:21 → 2026-03-11 (-127d) | 2026-07-30 17:21 → 2026-03-24 (-128d) |  |  | 8.39d → 50d | 16 → 13 | baseline start 2026-06-25 17:23 → none; baseline finish 2026-07-10 10:23 → none |
| 16 | Программирование интерфейса | 2026-06-24 16:21 → 2026-03-02 (-114d) | 2026-07-06 11:21 → 2026-03-23 (-105d) | 1.5w → 3w |  | 0d → 96d | Разработка дизайна интерфейса, 19 → none | resources Программист №3; Программист №4; Программист №1; Программист №2 → Программист №3; Программист №4; baseline start 2026-06-03 17:23 → none; baseline finish 2026-06-16 14:23 → none |
| 17 | Программирование средств обработки базы объектов | 2026-04-14 16:02 A → 2026-04-07 (-7d) | 2026-07-06 15:10 → 2026-04-27 (-70d) | 3.12w → 3w | 96% → 0% | 10.87d → 11d |  | resources Программист №3; Программист №4; Программист №1; Программист №2 → Программист №3; Программист №4; baseline start 2026-04-08 15:49 → none; baseline finish 2026-04-20 10:49 → none |
| 18 | Наполнение базы объектов | 2026-07-06 15:10 → 2026-04-28 (-69d) | 2026-07-28 12:29 → 2026-07-24 (-4d) | 3.16w → 12w |  | 10.87d → 11d |  | resources Наборщик-данных №1; Наборщик-данных №2; Наборщик-данных №3; Наборщик-данных №4; Наборщик-данных №5; Наборщик-данных №6; Наборщик-данных №7; Наборщик-данных №8; Наборщик-данных №9; Наборщик-данных №10; Наборщик-данных №11; Наборщик-данных №12; Наборщик-данных №13; Наборщик-данных №14; Наборщик-данных №15; Наборщик-данных №16; Наборщик-данных №17; Наборщик-данных №18; Наборщик-данных №19 → Наборщик-данных №1; Наборщик-данных №2; Наборщик-данных №3; Наборщик-данных №4; Наборщик-данных №5; baseline start 2026-04-20 10:49 → none; baseline finish 2026-05-13 12:49 → none |
| 19 | **Создание ядра GIS** | 2026-03-02 09:00 A → 2026-03-24 (+22d) | 2026-06-24 16:21 → 2026-08-10 (+47d) | 78.42d → 96d | 60% → 0% |  |  | baseline start 2026-03-02 09:00 → none; baseline finish 2026-06-03 17:23 → none |
| 20 | Создание модели ядра | 2026-03-31 09:00 A → 2026-03-24 (-7d) | 2026-04-28 09:47 A → 2026-04-27 (-1d) | 3.53w → 5w | 100% → 0% | none → 0d |  | resources Ведущий программист; Программист №1; Программист №2; Программист №3; Программист №4 → Ведущий программист; Программист №1; baseline start 2026-03-24 12:00 → none; baseline finish 2026-04-07 12:49 → none |
| 21 | Создание рабочей версии ядра | 2026-04-28 12:47 A → 2026-05-06 (+8d) | 2026-06-24 16:21 → 2026-08-10 (+47d) | 7.51w → 13.2w | 18% → 0% |  |  | resources Ведущий программист; Программист №1; Программист №2; Программист №3; Программист №4 → Ведущий программист; Программист №1; Программист №2; baseline start 2026-04-08 15:49 → none; baseline finish 2026-06-03 17:23 → none |
| 22 | Создание мультимедиа – наполнения | 2026-04-13 09:00 A → 2026-03-02 (-42d) | 2026-05-29 17:00 → 2026-03-23 (-67d) | 6w → 3w | 58% → 0% | 51.31d → 96d | Разработка дизайна интерфейса → none | baseline start 2026-04-07 15:00 → none; baseline finish 2026-05-22 16:00 → none |
| 23 | Наполнение сайта | 2026-07-06 17:21 → 2026-03-11 (-117d) | 2026-07-29 10:21 → 2026-03-31 (-120d) |  |  | 0d → 90d |  | baseline start 2026-06-16 16:23 → none; baseline finish 2026-07-08 10:23 → none |
| 25 | Тестирование модели ядра | 2026-04-14 12:49 A → 2026-04-28 (+14d) | 2026-04-28 12:47 A → 2026-05-06 (+8d) | 0.25w → 1w | 100% → 0% | none → 0d |  | resources Программист №1; Программист №2; Программист №3; Программист №4 → Программист №1; baseline start 2026-04-07 12:49 → none; baseline finish 2026-04-08 15:49 → none |
| 26 | Тестирование сайта | 2026-07-22 10:21 → 2026-03-18 (-126d) | 2026-08-12 11:28 → 2026-05-29 (-75d) | 3.03w → 8.2w |  | 0d → 50d |  | resources Программист №1; Программист №2; Программист №3; Программист №4 → Ведущий программист; Программист №1; Программист №2; baseline start 2026-07-01 10:23 → none; baseline finish 2026-07-22 11:29 → none |
| 27 | Сдача сайта в эксплуатацию | 2026-08-12 11:28 → 2026-05-29 (-75d) | 2026-08-12 11:28 → 2026-05-29 (-75d) |  |  | 0d → 50d |  | baseline start 2026-07-22 11:29 → none; baseline finish 2026-07-22 11:29 → none |

## Version 3 (saved 2026-04-30, file Step3.mpp)

Note of the change: return fourth

Last finish stays 2026-08-10.

Changed:

| ID | Task | Start | Finish | Total float | Predecessors |
| --- | --- | --- | --- | --- | --- |
| 16 | Программирование интерфейса | 2026-03-02 → 2026-03-11 (+9d) | 2026-03-23 → 2026-03-31 (+8d) | 96d → 90d | none → 13 |
